# Lịch sách dành cho trẻ em

Schedule from MS Project, 2015-04-06 to 2015-11-25, A marks actual dates.

## Calendars

- Standard: Mon-Fri 08:00-12:00, 13:00-17:00; Sat-Sun off.

## Schedule

| ID | WBS | Task | Type | Duration | Start | Finish | Predecessors | Complete | Remaining | Baseline start | Baseline finish | Baseline duration | Total slack | Free slack | Constraint | Work | Actual work |
| --- | --- | --- | --- | --- | --- | --- | --- | --- | --- | --- | --- | --- | --- | --- | --- | --- | --- |
| 1 | 1 | **Họp nhân viên biên tập** |  | 60.13d | 2015-04-13 A | 2015-07-06 |  | 15% | 50.88d | 2015-04-06 | 2015-07-06 | 65.13d? |  |  |  | 45.5h | 7h |
| 2 | 1.1 | Họp nhân viên biên tập 1 | manual | 1h | 2015-04-13 A | 2015-04-13 A |  | 100% |  | 2015-04-06 | 2015-04-06 | 1d? |  |  |  | 3.5h | 3.5h |
| 3 | 1.2 | Họp nhân viên biên tập 2 | manual | 1h | 2015-04-20 A | 2015-04-20 A |  | 100% |  | 2015-04-06 | 2015-04-06 | 1d? |  |  |  | 3.5h | 3.5h |
| 4 | 1.3 | Họp nhân viên biên tập 3 | manual | 1h | 2015-04-27 | 2015-04-27 | 16 |  |  | 2015-04-06 | 2015-04-06 | 1d |  |  |  | 3.5h |  |
| 5 | 1.4 | Họp nhân viên biên tập 4 | manual | 1h | 2015-05-04 | 2015-05-04 | 17FS-5d |  |  | 2015-04-20 | 2015-04-20 | 1d |  |  |  | 3.5h |  |
| 6 | 1.5 | Họp nhân viên biên tập 5 | manual | 1h | 2015-05-11 | 2015-05-11 | 17, 18 |  |  | 2015-05-07 | 2015-05-08 | 1d |  |  |  | 3.5h |  |
| 7 | 1.6 | Họp nhân viên biên tập 6 | manual | 1h | 2015-05-18 | 2015-05-18 | 19 |  |  | 2015-05-25 | 2015-05-25 | 1d? |  |  |  | 3.5h |  |
| 8 | 1.7 | Họp nhân viên biên tập 7 | manual | 1h | 2015-05-25 | 2015-05-25 | 15 |  |  | 2015-05-25 | 2015-05-26 | 1d? |  |  |  | 3.5h |  |
| 9 | 1.8 | Họp nhân viên biên tập 8 | manual | 1h | 2015-06-01 | 2015-06-01 |  |  |  | 2015-04-06 | 2015-04-06 | 1d? |  |  |  | 3.5h |  |
| 10 | 1.9 | Họp nhân viên biên tập 9 | manual | 1h | 2015-06-08 | 2015-06-08 | 22 |  |  | 2015-06-02 | 2015-06-02 | 1d? |  |  |  | 3.5h |  |
| 11 | 1.10 | Họp nhân viên biên tập 10 | manual | 1h | 2015-06-15 | 2015-06-15 | 23 |  |  | 2015-06-17 | 2015-06-17 | 1d |  |  |  | 3.5h |  |
| 12 | 1.11 | Họp nhân viên biên tập 11 | manual | 1h | 2015-06-22 | 2015-06-22 | 24FS-2.5% |  |  | 2015-06-25 | 2015-06-26 | 1d |  |  |  | 3.5h |  |
| 13 | 1.12 | Họp nhân viên biên tập 12 | manual | 1h | 2015-06-29 | 2015-06-29 | 25 |  |  | 2015-07-03 | 2015-07-06 | 1d? |  |  |  | 3.5h |  |
| 14 | 1.13 | Họp nhân viên biên tập 13 | manual | 1h | 2015-07-06 | 2015-07-06 | 21 |  |  | 2015-05-22 | 2015-05-25 | 1d? |  |  |  | 3.5h |  |
| 15 | 2 | **Sự tiếp nhận** |  | 35.5d | 2015-04-06 A | 2015-05-25 |  | 40% | 21.2d | 2015-04-06 | 2015-05-25 | 35.5d |  |  |  | 444h | 120h |
| 16 | 2.1 | Nhận bản thảo | milestone | 0d | 2015-07-23 | 2015-07-23 | 28 |  |  | 2015-07-03 | 2015-07-03 | 0d | 88.88d | 0d | start no earlier than 2015-04-06 |  |  |
| 17 | 2.2 | Biên tập nội dung | manual | 15d | 2015-04-06 A | 2015-04-24 A | 29 | 100% |  | 2015-07-06 | 2015-07-24 | 15d |  |  |  | 120h | 120h |
| 18 | 2.3 | Đánh giá tác phẩm gốc | manual | 10.25d | 2015-04-23 | 2015-05-07 |  |  |  | 2015-04-23 | 2015-05-07 | 10.25d |  |  |  | 164h |  |
| 19 | 2.4 | Đánh giá của tác giả về nội dung biên tập | manual | 12d | 2015-05-07 | 2015-05-22 | 31 |  |  | 2015-07-06 | 2015-07-21 | 12d |  |  |  | 160h |  |
| 20 | 2.5 | Bản sao cho bộ phận biên tập | milestone, manual | 0d | 2015-05-25 | 2015-05-25 | 32 |  |  | 2015-07-06 | 2015-07-06 | 0d |  |  |  |  |  |
| 21 | 3 | **Biên tập** |  | 29.13d | 2015-05-25 | 2015-07-03 | 33 |  |  | 2015-04-13 | 2015-05-22 | 29.13d |  |  |  | 400h |  |
| 22 | 3.1 | Sắp xếp bản thảo cho bản sao | manual | 5.13d | 2015-05-25 | 2015-06-01 | 34 |  |  | 2015-07-06 | 2015-07-13 | 6d |  |  |  | 60h |  |
| 23 | 3.2 | Bản sao | manual | 11.25d | 2015-06-01 | 2015-06-16 |  |  |  | 2015-06-01 | 2015-06-16 | 12d |  |  |  | 180h |  |
| 24 | 3.3 | Đánh giá của tác giả về bản sao | manual | 10d | 2015-06-16 | 2015-06-29 | 35 |  |  | 2015-07-06 | 2015-07-17 | 10d |  |  |  | 100h |  |
| 25 | 3.4 | Kết hợp bản sao | manual | 5.13d | 2015-06-26 | 2015-07-03 | 37 |  |  | 2015-07-06 | 2015-07-13 | 5.13d |  |  |  | 60h |  |
| 26 | 3.5 | Bàn giao cho bộ phận sản xuất | milestone, manual | 0d | 2015-07-03 | 2015-07-03 | 38 |  |  | 2015-07-06 | 2015-07-06 | 0d |  |  |  |  |  |

| ID | WBS | Task | Type | Duration | Start | Finish | Predecessors | Baseline start | Baseline finish | Baseline duration | Work |
| --- | --- | --- | --- | --- | --- | --- | --- | --- | --- | --- | --- |
| 27 | 4 | **Thiết kế và sản xuất** |  | 58.25d | 2015-07-03 | 2015-09-23 |  | 2015-07-03 | 2015-09-23 | 58.25d? | 2072h |
| 28 | 4.1 | Thiết lập trang | manual | 15d | 2015-07-03 | 2015-07-23 |  | 2015-07-03 | 2015-07-03 | 1d? | 120h |
| 29 | 4.2 | Thiết kế minh hoạ nội dung | manual | 15.25d | 2015-07-03 | 2015-07-24 | 41 | 2015-07-06 | 2015-07-06 | 1d | 240h |
| 30 | 4.3 | Duyệt bản in lần 1 | manual | 30d | 2015-07-24 | 2015-09-03 | 40 | 2015-07-06 | 2015-07-06 | 1d | 320h |
| 31 | 4.4 | Đọc soát và lập chỉ mục | manual | 10d | 2015-07-24 | 2015-08-06 | 36 | 2015-07-06 | 2015-07-06 | 1d | 100h |
| 32 | 4.5 | Chỉnh sửa theo duyệt bản in lần 1 | manual | 10d | 2015-08-07 | 2015-08-20 | 44 | 2015-07-06 | 2015-07-06 | 1d | 120h |
| 33 | 4.6 | Gửi bản đã soát đến sản xuất | milestone, manual | 0d | 2015-08-21 | 2015-08-21 | 45FS+3d | 2015-07-09 | 2015-07-09 | 1d |  |
| 34 | 4.7 | Nhập chỉnh sửa trang và chỉ mục | manual | 5d | 2015-08-21 | 2015-08-27 |  | 2015-07-03 | 2015-07-03 | 1d | 60h |
| 35 | 4.8 | Thiết kế bìa sách | manual | 5d | 2015-08-28 | 2015-09-03 | 44 | 2015-07-06 | 2015-07-06 | 1d | 40h |
| 36 | 4.9 | Duyệt bản in lần 2 | manual | 13d | 2015-09-04 | 2015-09-22 | 48 | 2015-04-14 | 2015-04-14 | 1d | 120h |
| 37 | 4.10 | Soát lỗi và duyệt lần cuối | manual | 6.5d | 2015-09-04 | 2015-09-14 | 49 | 2015-04-14 | 2015-04-14 | 1d | 40h |
| 38 | 4.11 | Gửi bản đã soát đến sản xuất | milestone, manual | 0d | 2015-09-15 | 2015-09-15 | 50 | 2015-04-14 | 2015-04-14 | 1d |  |
| 39 | 4.12 | Duyệt cuối cùng | manual | 5d | 2015-09-16 | 2015-09-22 | 51 | 2015-04-14 | 2015-04-14 | 1d | 80h |
| 40 | 4.13 | Thiết kế website đi kèm sách | manual | 10d | 2015-09-04 | 2015-09-17 |  | 2015-07-03 | 2015-07-03 | 1d | 88h |
| 41 | 4.14 | Tạo bản mockup | manual | 4.5d | 2015-09-04 | 2015-09-10 |  | 2015-07-03 | 2015-07-03 | 1d | 48h |
| 42 | 4.15 | Duyệt với tác giả | manual | 2d | 2015-09-16 | 2015-09-17 |  | 2015-07-03 | 2015-07-03 | 1d | 40h |
| 43 | 4.16 | Chuẩn bị màu và in ấn | manual | 46d | 2015-09-23 | 2015-11-25 |  | 2015-07-03 | 2015-07-03 | 1d | 328h |
| 44 | 4.17 | Gửi đến xưởng in màu | manual | 1d | 2015-09-23 | 2015-09-23 |  | 2015-07-03 | 2015-07-03 | 1d | 8h |
| 45 | 4.18 | Tạo bản in thử | manual | 10d | 2015-09-28 | 2015-10-09 |  | 2015-07-03 | 2015-07-03 | 1d | 80h |
| 46 | 4.19 | In và phát hành | manual | 30d | 2015-10-15 | 2015-11-25 |  | 2015-07-03 | 2015-07-03 | 1d | 240h |
| 47 | 5 | **Chuẩn bị ra mắt** |  | 22d | 2015-09-28 | 2015-10-27 |  | 2015-04-13 | 2015-04-13 | 1d | 212h |
| 48 | 5.1 | Lập kế hoạch ra mắt | manual | 5d | 2015-09-28 | 2015-10-02 |  | 2015-04-13 | 2015-04-13 | 1d | 36h |
| 49 | 5.2 | Phân công nhóm phụ trách ra mắt | manual | 1d | 2015-10-05 | 2015-10-05 |  | 2015-04-13 | 2015-04-13 | 1d | 8h |
| 50 | 5.3 | Hoàn thành bảng câu hỏi tác giả | manual | 5d | 2015-10-06 | 2015-10-12 |  | 2015-04-13 | 2015-04-13 | 1d | 80h |
| 51 | 5.4 | Lên lịch phỏng vấn tác giả | manual | 1d | 2015-10-13 | 2015-10-13 |  | 2015-04-13 | 2015-04-13 | 1d | 8h |
| 52 | 5.5 | Thiết kế và đặt hàng tài liệu marketing | manual | 10d | 2015-10-14 | 2015-10-27 |  | 2015-04-13 | 2015-04-13 | 1d | 80h |
