# SimpleTracking_Start

Schedule from MS Project, 2015-01-05 to 2015-02-24, status date 2015-01-14, A marks actual dates.

## Calendars

- Standard: Mon-Fri 08:00-12:00, 13:00-17:00; Sat-Sun off.

## Resources

| Resource |
| --- |
| Trần Thanh Điện |
| Tạ Thanh Hải |
| Phạm Tấn Hoàng |
| Lại Hữu Diệp |
| Nguyễn Thúy An |
| Trương Thanh Mai |
| Nguyễn Xuân Thy |

## Schedule

| ID | WBS | Task | Type | Duration | Start | Finish | Predecessors | Complete | Remaining | Baseline start | Baseline finish | Baseline duration | Resources | Work | Actual work |
| --- | --- | --- | --- | --- | --- | --- | --- | --- | --- | --- | --- | --- | --- | --- | --- |
| 1 | 1 | **Giai đoạn lập kế hoạch** |  | 11d | 2015-01-05 A | 2015-01-19 A |  | 100% |  | 2015-01-05 | 2015-01-19 | 0d |  | 248h | 248h |
| 2 | 1.1 | Chỉ định các thành viên trong nhóm phát sinh | manual | 1d | 2015-01-05 A | 2015-01-05 A |  | 100% |  | 2015-01-05 | 2015-01-05 | 0d | Trần Thanh Điện | 8h | 8h |
| 3 | 1.2 | Hoàn thành bảng câu hỏi về tác giả | manual | 1w | 2015-01-06 A | 2015-01-12 A | 2 | 100% |  | 2015-01-06 | 2015-01-12 | 0d | Tạ Thanh Hải | 40h | 40h |
| 4 | 1.3 | Lên lịch phỏng vấn tác giả | manual | 1w | 2015-01-05 A | 2015-01-09 A | 2 | 100% |  | 2015-01-05 | 2015-01-12 | 0d | Phạm Tấn Hoàng | 40h | 40h |
| 5 | 1.4 | Thiết kế và đặt hàng tài liệu tiếp thị | manual | 2w | 2015-01-06 A | 2015-01-19 A | 2 | 100% |  | 2015-01-06 | 2015-01-19 | 0d | Lại Hữu Diệp; Nguyễn Thúy An | 160h | 160h |
| 6 | 1.5 | Lập kế hoàn hoàn tất | milestone, manual | 0d | 2015-01-19 A | 2015-01-19 A | 5 | 100% |  | 2015-01-19 | 2015-01-19 | 0d |  |  |  |
| 7 | 2 | **Giai đoạn ra mắt nội bộ** |  | 13d | 2015-01-20 A | 2015-02-05 | 1 | 77% | 3.03d | 2015-01-20 | 2015-02-06 | 0d |  | 204h | 204h |
| 8 | 2.1 | Khởi động cuộc họp ra mắt sách | manual | 1d | 2015-01-20 A | 2015-01-20 A |  | 100% |  | 2015-01-20 | 2015-01-20 | 0d | Trương Thanh Mai [50%]; Nguyễn Thúy An | 12h | 12h |
| 9 | 2.2 | Soạn báo cáo lời-lỗ về sách | manual | 1.07d | 2015-01-21 A | 2015-01-22 A | 8 | 100% |  | 2015-01-21 | 2015-01-23 | 0d | Trần Thanh Điện | 24h | 24h |
| 10 | 2.3 | Lập kế hoạch cho hành trình của tác giả | manual | 7d | 2015-01-21 A | 2015-01-29 A | 8 | 100% |  | 2015-01-21 | 2015-01-29 | 0d | Nguyễn Xuân Thy | 56h | 56h |
| 11 | 2.4 | Chuẩn bị kênh bán hàng | manual | 2.8w | 2015-01-29 A | 2015-02-17 A | 8 | 100% |  | 2015-01-21 | 2015-01-28 | 0d | Lại Hữu Diệp | 112h | 112h |
| 12 | 2.5 | Chuẩn bị bộ tài liệu bán sách | manual | 2d | 2015-01-29 | 2015-01-30 | 11 |  |  | 2015-01-29 | 2015-01-30 | 0d |  |  |  |
| 13 | 2.6 | Phân phối tài liệu tiếp thị nội bộ | manual | 1w | 2015-01-29 | 2015-02-04 | 8, 11 |  |  | 2015-01-29 | 2015-02-04 | 0d |  |  |  |
| 14 | 3 | **Giai đoạn ra mắt công chúng** |  | 2d | 2015-02-05 | 2015-02-06 | 13 |  |  | 2015-02-05 | 2015-02-06 | 0d |  |  |  |
| 15 | 3.1 | Hành trình và các buổi xuất hiện của tác giả | manual | 12d | 2015-02-09 | 2015-02-24 | 7 |  |  | 2015-02-09 | 2015-02-24 | 0d |  |  |  |
| 16 | 3.2 | Phỏng vấn radio với tác giả | manual | 2d | 2015-02-09 | 2015-02-10 |  |  |  | 2015-02-09 | 2015-02-10 | 0d |  |  |  |
| 17 | 3.3 | Buổi đọc sách và ký tặng tại hội chợ sách | manual | 1d | 2015-02-09 | 2015-02-09 |  |  |  | 2015-02-09 | 2015-02-09 | 0d |  |  |  |
| 18 | 3.4 | Phân phối bản in thử (advance copies) | manual | 1d | 2015-02-10 | 2015-02-10 | 17 |  |  | 2015-02-10 | 2015-02-10 | 0d |  |  |  |
| 19 | 3.5 | Phân phối bộ tài liệu bán sách | manual | 2d | 2015-02-09 | 2015-02-10 |  |  |  | 2015-02-09 | 2015-02-10 | 0d |  |  |  |
| 20 | 3.6 | Phối hợp các bài báo chuyên đề trên tạp chí | manual | 2d | 2015-02-09 | 2015-02-10 |  |  |  | 2015-02-09 | 2015-02-10 | 0d |  |  |  |
| 21 | 3.7 | Ra mắt cổng thông tin web cho sách | manual | 7d | 2015-02-11 | 2015-02-19 | 20 |  |  | 2015-02-11 | 2015-02-19 | 0d |  |  |  |
| 22 | 3.8 | Ra mắt các chương trình truyền thông xã hội cho sách | manual | 1w | 2015-02-11 | 2015-02-17 | 20 |  |  | 2015-02-11 | 2015-02-17 | 0d |  |  |  |
| 23 | 3.9 | Ra mắt công chúng hoàn tất! | manual | 1w | 2015-02-18 | 2015-02-24 | 22 |  |  | 2015-02-18 | 2015-02-24 | 0d |  |  |  |
